# DeviceLoan MVP WBS (MS Project view)

Schedule from MS Project XML, 2026-11-02 to 2026-11-27.
整日粒度 WBS，用于 MS Project 截图
DeviceLoan 项目组

## Calendars

- Standard: Mon-Fri 08:00-12:00, 13:00-17:00; Sat-Sun off.

## Resources

| Resource |
| --- |
| BA-1.1 |
| BA-1.2 |
| PM-1.3 |
| BA-2.1 |
| BA-2.2 |
| PM-2.3 |
| PM-2.4 |
| Dev-3.1 |
| QA-3.2 |
| Dev-3.3 |
| QA-3.4 |
| Dev-3.5 |
| QA-3.6 |
| Dev-3.7 |
| QA-3.8 |
| Dev-3.9 |
| QA-3.10 |
| Dev-3.11 |
| PM-4.1 |
| PM-5.1 |

## Schedule

| ID | WBS | Task | Duration | Start | Finish | Predecessors | Total slack | Constraint | Resources | Work |
| --- | --- | --- | --- | --- | --- | --- | --- | --- | --- | --- |
| 1 | 1 | **1 启动** | 3d | 2026-11-02 | 2026-11-04 |  |  |  |  |  |
| 2 | 1.1 | 商业论证与项目章程 | 1d | 2026-11-02 | 2026-11-02 |  |  | start no earlier than 2026-11-02 | BA-1.1 | 8h |
| 3 | 1.2 | 干系人登记与启动阶段评审 | 1d | 2026-11-02 | 2026-11-03 | 2 |  | start no earlier than 2026-11-02 | BA-1.2 | 8h |
| 4 | 1.3 | 启动阶段收口与派单 | 1d | 2026-11-03 | 2026-11-04 | 3 | 1d | start no earlier than 2026-11-03 | PM-1.3 | 8h |
| 5 | 2 | **2 规划** | 4.5d | 2026-11-03 | 2026-11-10 |  |  |  |  |  |
| 6 | 2.1 | 范围、需求与架构设计 | 2d | 2026-11-03 | 2026-11-05 | 3 |  | start no earlier than 2026-11-03 | BA-2.1 | 16h |
| 7 | 2.2 | 风险登记与质量计划 | 1d | 2026-11-05 | 2026-11-06 | 6 | 0.5d | start no earlier than 2026-11-05 | BA-2.2 | 8h |
| 8 | 2.3 | 进度计划与成本基线 | 1.5d | 2026-11-05 | 2026-11-09 | 4, 6 |  | start no earlier than 2026-11-05 | PM-2.3 | 12h |
| 9 | 2.4 | 甘特图与规划基线评审 | 1d | 2026-11-09 | 2026-11-10 | 7, 8 |  | start no earlier than 2026-11-09 | PM-2.4 | 8h |
| 10 | 3 | **3 执行** | 10.75d | 2026-11-10 | 2026-11-25 |  |  |  |  |  |
| 11 | 3.1 | WP1 账户与角色权限 | 2d | 2026-11-10 | 2026-11-12 | 9 |  | start no earlier than 2026-11-10 | Dev-3.1 | 16h |
| 12 | 3.2 | QA1 验证账户与权限 | 1d | 2026-11-12 | 2026-11-13 | 11 | 10.25d | start no earlier than 2026-11-12 | QA-3.2 | 8h |
| 13 | 3.3 | WP2 设备目录与查询 | 1.25d | 2026-11-12 | 2026-11-13 | 11 |  | start no earlier than 2026-11-12 | Dev-3.3 | 10h |
| 14 | 3.4 | QA2 验证设备查询 | 1d | 2026-11-13 | 2026-11-16 | 13 | 9d | start no earlier than 2026-11-13 | QA-3.4 | 8h |
| 15 | 3.5 | WP3 申请审批与冲突阻止 | 2d | 2026-11-13 | 2026-11-17 | 13 |  | start no earlier than 2026-11-13 | Dev-3.5 | 16h |
| 16 | 3.6 | QA3 验证审批与冲突阻止 | 1d | 2026-11-17 | 2026-11-18 | 15 | 7d | start no earlier than 2026-11-17 | QA-3.6 | 8h |
| 17 | 3.7 | WP4 借出归还与逾期 | 1.5d | 2026-11-17 | 2026-11-19 | 15 |  | start no earlier than 2026-11-17 | Dev-3.7 | 12h |
| 18 | 3.8 | QA4 验证借还生命周期 | 1d | 2026-11-19 | 2026-11-20 | 17 | 5.5d | start no earlier than 2026-11-19 | QA-3.8 | 8h |
| 19 | 3.9 | WP5 统计与审计日志 | 2.25d | 2026-11-19 | 2026-11-23 | 17 |  | start no earlier than 2026-11-19 | Dev-3.9 | 18h |
| 20 | 3.10 | QA5 验证统计与审计 | 1d | 2026-11-23 | 2026-11-24 | 19 | 3.25d | start no earlier than 2026-11-23 | QA-3.10 | 8h |
| 21 | 3.11 | 演示脚本与执行期集成 | 1.75d | 2026-11-23 | 2026-11-25 | 19 |  | start no earlier than 2026-11-23 | Dev-3.11 | 14h |
| 22 | 4 | **4 监控** | 1d | 2026-11-25 | 2026-11-26 |  |  |  |  |  |
| 23 | 4.1 | EVM 偏差分析与完工预测 | 1d | 2026-11-25 | 2026-11-26 | 13, 21 |  | start no earlier than 2026-11-25 | PM-4.1 | 8h |
| 24 | 5 | **5 收尾** | 1.5d | 2026-11-26 | 2026-11-27 |  |  |  |  |  |
| 25 | 5.1 | 验收演示、经验教训与归档移交 | 1.5d | 2026-11-26 | 2026-11-27 | 23 |  | start no earlier than 2026-11-26 | PM-5.1 | 12h |

Notes:
- 2: 负责：BA
- 3: 负责：BA/CCB
- 4: 负责：PM
- 6: 负责：BA
- 7: 负责：BA
- 8: 负责：PM
- 9: 负责：PM/CCB
- 11: 负责：Dev
- 12: 负责：QA
- 13: 负责：Dev
- 14: 负责：QA
- 15: 负责：Dev
- 16: 负责：QA
- 17: 负责：Dev
- 18: 负责：QA
- 19: 负责：Dev
- 20: 负责：QA
- 21: 负责：Dev/PM
- 23: 负责：PM
- 25: 负责：PM/BA
