# DeviceLoan MVP WBS

Schedule from MS Project XML, 2026-11-02 to 2026-11-26.
实验室设备借用管理 MVP
DeviceLoan 项目组

## Calendars

- Standard: Mon-Fri 08:00-12:00, 13:00-17:00; Sat-Sun off.

## Resources

| Resource |
| --- |
| BA |
| CCB |
| Dev |
| PM |
| QA |

## Schedule

| ID | WBS | Task | Duration | Start | Finish | Predecessors | Resources | Work |
| --- | --- | --- | --- | --- | --- | --- | --- | --- |
| 1 | 1 | **1 启动** | 2.5d | 2026-11-02 | 2026-11-04 |  |  | 20h |
| 2 | 1.1 | 商业论证与NPV初筛 | 0.5d | 2026-11-02 | 2026-11-02 |  | BA | 4h |
| 3 | 1.2 | 项目章程 | 0.5d | 2026-11-02 | 2026-11-02 | 2 | BA | 4h |
| 4 | 1.3 | 干系人登记与启动会 | 0.5d | 2026-11-02 | 2026-11-03 | 3 | BA | 4h |
| 5 | 1.4 | 启动阶段评审 | 0.5d | 2026-11-03 | 2026-11-03 | 4 | CCB | 4h |
| 6 | 1.5 | 启动阶段收口与派单 | 0.5d | 2026-11-03 | 2026-11-04 | 5 | PM | 4h |
| 7 | 2 | **2 规划** | 4.5d | 2026-11-03 | 2026-11-10 |  |  | 36h |
| 8 | 2.1 | 范围说明书与需求追溯矩阵 | 0.75d | 2026-11-03 | 2026-11-04 | 5 | BA | 6h |
| 9 | 2.2 | 架构与接口契约 | 0.75d | 2026-11-04 | 2026-11-05 | 8 | BA | 6h |
| 10 | 2.3 | WBS与WBS词典 | 0.5d | 2026-11-05 | 2026-11-05 | 9 | BA | 4h |
| 11 | 2.4 | 风险登记与质量计划 | 1d | 2026-11-05 | 2026-11-06 | 9 | BA | 8h |
| 12 | 2.5 | 进度计划与关键路径分析 | 0.5d | 2026-11-05 | 2026-11-06 | 10, 6 | PM | 4h |
| 13 | 2.6 | 成本基线与EVM口径 | 1d | 2026-11-06 | 2026-11-09 | 12 | PM | 8h |
| 14 | 2.7 | 甘特图与Project XML | 0.5d | 2026-11-09 | 2026-11-09 | 13 | PM | 4h |
| 15 | 2.8 | 规划基线评审 | 0.5d | 2026-11-09 | 2026-11-10 | 14, 11 | CCB | 4h |
| 16 | 3 | **3 执行** | 10.75d | 2026-11-10 | 2026-11-25 |  |  | 86h |
| 17 | 3.1 | WP1账户与角色权限 | 2d | 2026-11-10 | 2026-11-12 | 15 | Dev | 16h |
| 18 | 3.2 | QA1验证账户与权限 | 0.75d | 2026-11-12 | 2026-11-13 | 17 | QA | 6h |
| 19 | 3.3 | WP2设备目录与查询 | 1.25d | 2026-11-12 | 2026-11-13 | 17 | Dev | 10h |
| 20 | 3.4 | QA2验证设备查询 | 0.75d | 2026-11-13 | 2026-11-16 | 19 | QA | 6h |
| 21 | 3.5 | WP3申请审批与冲突阻止 | 2d | 2026-11-13 | 2026-11-17 | 19 | Dev | 16h |
| 22 | 3.6 | QA3验证审批与冲突阻止 | 1d | 2026-11-17 | 2026-11-18 | 21 | QA | 8h |
| 23 | 3.7 | WP4借出归还与逾期 | 1.5d | 2026-11-17 | 2026-11-19 | 21 | Dev | 12h |
| 24 | 3.8 | QA4验证借还生命周期 | 0.75d | 2026-11-19 | 2026-11-19 | 23 | QA | 6h |
| 25 | 3.9 | WP5统计与审计日志 | 2.25d | 2026-11-19 | 2026-11-23 | 23 | Dev | 18h |
| 26 | 3.10 | QA5验证统计与审计 | 0.75d | 2026-11-23 | 2026-11-24 | 25 | QA | 6h |
| 27 | 3.11 | 演示数据与演示脚本 | 1.25d | 2026-11-23 | 2026-11-24 | 25 | Dev | 10h |
| 28 | 3.12 | 执行期集成与演示准备 | 0.5d | 2026-11-24 | 2026-11-25 | 27 | PM | 4h |

Notes:
- 1: 阶段汇总
- 2: 负责：BA；计划 0.50 人日
- 3: 负责：BA；计划 0.50 人日
- 4: 负责：BA；计划 0.50 人日
- 5: 负责：CCB；计划 0.50 人日
- 6: 负责：PM；计划 0.50 人日
- 7: 阶段汇总
- 8: 负责：BA；计划 0.75 人日
- 9: 负责：BA；计划 0.75 人日
- 10: 负责：BA；计划 0.50 人日
- 11: 负责：BA；计划 1.00 人日
- 12: 负责：PM；计划 0.50 人日
- 13: 负责：PM；计划 1.00 人日
- 14: 负责：PM；计划 0.50 人日
- 15: 负责：CCB；计划 0.50 人日
- 16: 阶段汇总
- 17: 负责：Dev；计划 1.75 人日
- 18: 负责：QA；计划 0.75 人日
- 19: 负责：Dev；计划 1.25 人日
- 20: 负责：QA；计划 0.75 人日
- 21: 负责：Dev；计划 2.00 人日
- 22: 负责：QA；计划 1.00 人日
- 23: 负责：Dev；计划 1.50 人日
- 24: 负责：QA；计划 0.75 人日
- 25: 负责：Dev；计划 2.25 人日
- 26: 负责：QA；计划 0.75 人日
- 27: 负责：Dev；计划 1.25 人日
- 28: 负责：PM；计划 0.50 人日

| ID | WBS | Task | Duration | Start | Finish | Predecessors | Resources | Work |
| --- | --- | --- | --- | --- | --- | --- | --- | --- |
| 29 | 4 | **4 监控** | 8d | 2026-11-13 | 2026-11-25 |  |  | 64h |
| 30 | 4.1 | EVM数据点1与偏差分析 | 0.5d | 2026-11-13 | 2026-11-16 | 19 | PM | 4h |
| 31 | 4.2 | EVM数据点2与完工预测 | 0.5d | 2026-11-25 | 2026-11-25 | 30, 28 | PM | 4h |
| 32 | 5 | **5 收尾** | 1d | 2026-11-25 | 2026-11-26 |  |  | 8h |
| 33 | 5.1 | 验收演示与UAT | 0.5d | 2026-11-25 | 2026-11-26 | 31 | PM | 4h |
| 34 | 5.2 | 经验教训报告 | 0.5d | 2026-11-26 | 2026-11-26 | 33 | BA | 4h |
| 35 | 5.3 | 最终报告与归档移交 | 0.5d | 2026-11-26 | 2026-11-26 | 33 | PM | 4h |

Notes:
- 29: 阶段汇总
- 30: 负责：PM；计划 0.50 人日
- 31: 负责：PM；计划 0.50 人日
- 32: 阶段汇总
- 33: 负责：PM；计划 0.50 人日
- 34: 负责：BA；计划 0.50 人日
- 35: 负责：PM；计划 0.50 人日
